# Proyecto-004-HUACCANA

Schedule from MS Project, 2020-06-30 to 2020-07-29.

## Calendars

- Estándar: Mon-Fri 09:00-13:00, 15:00-19:00; Sat-Sun off.

## Resources

| Resource |
| --- |
| Ing. Yovan NIÑO DE GUZMAN TORRE |

## Schedule

| ID | WBS | Task | Type | Duration | Start | Finish | Total slack | Resources | Work |
| --- | --- | --- | --- | --- | --- | --- | --- | --- | --- |
| 1 | 1 | **Mejoramiento de los Servicios de Salud del Centro de Salud Huaccana, Distrito de Huaccana, Provincia de Chincheros, Apurímac** |  | 22d | 2020-06-30 | 2020-07-29 | 0d |  | 232h |
| 2 | 1.1 | **Instalaciones Eléctricas** |  | 22d | 2020-06-30 | 2020-07-29 | 0d |  | 232h |
| 3 | 1.1.1 | **Situación Actual** |  | 5d | 2020-06-30 | 2020-07-06 | 0d |  | 40h |
| 4 | 1.1.1.1 | Informe de Evaluación del Estado de las Instalaciones Eléctricas (diagnostico) | manual | 4d | 2020-06-30 | 2020-07-03 |  | Ing. Yovan NIÑO DE GUZMAN TORRE | 32h |
| 5 | 1.1.1.2 | Solicitud de Factibilidad de Servicios a la Empresa Consecionaria | manual | 1d | 2020-07-06 | 2020-07-06 |  | Ing. Yovan NIÑO DE GUZMAN TORRE | 8h |
| 6 | 1.1.2 | **Situación Proyectada** |  | 18d | 2020-07-06 | 2020-07-29 | 0d |  | 192h |
| 7 | 1.1.2.1 | Memoria Descriptiva | manual | 3d | 2020-07-06 | 2020-07-08 |  | Ing. Yovan NIÑO DE GUZMAN TORRE | 24h |
| 8 | 1.1.2.2 | Cálculo estimado de las instalaciones eléctricas (Suministro Eléctrico, Tableros General y de distribución eléctrica, Sistema de iluminación exterior, interior, tomacorrientes, Sistema de fuerza, pararrayos y sistema de puesta a tierra y otros necesarios | manual | 5d | 2020-07-09 | 2020-07-15 |  | Ing. Yovan NIÑO DE GUZMAN TORRE | 40h |
| 9 | 1.1.2.3 | Especificaciones técnicas generales estipulados en el anteproyecto, con los cuales se sustentarán los costos de inversión, señalando los supuestos y metodología utilizada | manual | 5d | 2020-07-14 | 2020-07-20 |  | Ing. Yovan NIÑO DE GUZMAN TORRE | 40h |
| 10 | 1.1.2.4 | Cálculo del sistema de utilización en MT | manual | 5d | 2020-07-19 | 2020-07-23 |  | Ing. Yovan NIÑO DE GUZMAN TORRE | 40h |
| 11 | 1.1.2.5 | Planos de Instalaciones Eléctricas | manual | 3d | 2020-07-24 | 2020-07-28 |  | Ing. Yovan NIÑO DE GUZMAN TORRE | 24h |
| 12 | 1.1.2.6 | Costos de Operación y Mantenimiento de las Instalaciones Eléctricas | manual | 1d | 2020-07-27 | 2020-07-27 |  | Ing. Yovan NIÑO DE GUZMAN TORRE | 8h |
| 13 | 1.1.2.7 | Costos y Presupuesto de la especialidad Instalaciones Eléctricas | manual | 2d | 2020-07-28 | 2020-07-29 |  | Ing. Yovan NIÑO DE GUZMAN TORRE | 16h |
